# SRA2021-G10-甘特图v0.1.2

How a schedule from MS Project changed from version to version. A marks actual dates.

## Version 1 (saved 2021-05-12, file PRD2021-G10-甘特图v0.1.9.mpp)

| ID | WBS | Task | Duration | Start | Finish | Predecessors | Complete | Total float | Constraint |
| --- | --- | --- | --- | --- | --- | --- | --- | --- | --- |
| 1 | 1 | **项目启动** | 2.5d | 2021-03-09 08:00 A | 2021-03-11 11:00 A |  | 100% |  |  |
| 2 |  | 确定小组成员 | 1h | 2021-03-09 08:00 A | 2021-03-09 09:00 A |  | 100% |  |  |
| 3 |  | 确定选题 | 0.25h | 2021-03-10 10:00 A | 2021-03-10 10:15 A | 2 | 100% |  |  |
| 4 |  | 第一次会议 | 0.25h | 2021-03-11 08:00 A | 2021-03-11 08:15 A | 3 | 100% |  |  |
| 5 |  | 软件资源配置 | 0.5h | 2021-03-11 10:00 A | 2021-03-11 10:30 A | 4 | 100% |  |  |
| 6 |  | logo设计 | 0.5h | 2021-03-11 10:30 A | 2021-03-11 11:00 A | 3 | 100% |  |  |
| 7 | 2 | **项目计划** | 16d | 2021-03-11 08:00 A | 2021-03-26 12:00 | 1 | 99% | 0d |  |
| 8 |  | 确定分工 | 0.5h | 2021-03-11 08:00 A | 2021-03-11 08:30 A | 4 | 100% |  |  |
| 9 |  | 制作WBS图 | 1h | 2021-03-12 08:00 A | 2021-03-12 09:00 A | 8FS+1d | 100% |  |  |
| 10 |  | 制作OBS图 | 1h | 2021-03-12 08:00 A | 2021-03-12 09:00 A | 8FS+1d | 100% |  |  |
| 11 |  | 找到模板 | 1h | 2021-03-12 08:00 A | 2021-03-12 09:00 A | 8FS+1d | 100% |  |  |
| 12 |  | 项目初步甘特图 | 1h | 2021-03-12 08:00 A | 2021-03-12 09:00 A | 8FS+1d | 100% |  |  |
| 13 |  | 小组环境配置 | 1h | 2021-03-12 08:00 A | 2021-03-12 11:00 A | 8FS+1d | 100% |  |  |
| 14 | 2.7 | **可行性分析初步** | 1.8h | 2021-03-13 08:00 A | 2021-03-13 09:48 | 11FS+1d | 100% |  |  |
| 15 |  | 模板1,2,3节 | 1.8h | 2021-03-13 08:00 A | 2021-03-13 09:48 A | 11FS+1d | 100% |  |  |
| 16 |  | 模板4,5节 | 1.8h | 2021-03-13 08:00 A | 2021-03-13 09:48 A | 11FS+1d | 100% |  |  |
| 17 |  | 模板6,7,8节 | 1.8h | 2021-03-13 08:00 A | 2021-03-13 09:48 A | 11FS+1d | 100% |  |  |
| 18 |  | 剩余部分+审核 | 1.8h | 2021-03-13 08:00 A | 2021-03-13 09:48 A | 11FS+1d | 100% |  |  |
| 19 |  | 第二次会议 | 0.2h | 2021-03-13 10:00 A | 2021-03-13 10:12 A | 4FS+2d | 100% |  |  |
| 20 | 2.8 | **项目计划初步制定** | 1d | 2021-03-14 10:00 A | 2021-03-14 12:00 A | 14FS+1d | 100% |  |  |
| 21 |  | 模板1,2,3节 | 2h | 2021-03-14 10:00 A | 2021-03-14 12:00 A | 11 | 100% |  |  |
| 22 |  | 模板4,5节 | 2h | 2021-03-14 10:00 A | 2021-03-14 12:00 A | 11 | 100% |  |  |
| 23 |  | 模板6,7节 | 2h | 2021-03-14 10:00 A | 2021-03-14 12:00 A | 11 | 100% |  |  |
| 24 |  | 模板8,9节 | 2h | 2021-03-14 10:00 A | 2021-03-14 12:00 A |  | 100% |  |  |
| 25 |  | 剩余部分+审核 | 2h | 2021-03-14 10:00 A | 2021-03-14 12:00 A | 11 | 100% |  |  |
| 26 |  | 项目章程 | 2h | 2021-03-15 10:00 A | 2021-03-15 12:00 A | 20FS+1d | 100% |  |  |
| 27 |  | 项目计划ppt | 4h | 2021-03-16 10:00 A | 2021-03-17 12:00 | 20FS+2d | 99% |  |  |
| 28 |  | 第三次会议 | 2h | 2021-03-18 10:00 A | 2021-03-18 12:00 A | 19FS+5d | 100% |  |  |
| 29 | 2.12 | **UML概述** | 16h | 2021-03-19 10:00 A | 2021-03-26 12:00 A | 20 | 100% |  |  |
| 30 |  | 甘特图更新 | 2h | 2021-03-19 10:00 A | 2021-03-19 12:00 A | 12FS+7d | 100% |  |  |
| 31 |  | 翻转课堂 | 1.8h | 2021-03-20 10:00 A | 2021-03-20 11:48 A | 28FS+1d | 100% |  | start no earlier than 2021-03-20 10:00 |
| 32 |  | 奶茶团建 | 0.2h | 2021-03-20 10:00 A | 2021-03-20 10:12 A | 28FS+1d | 100% |  |  |
| 33 |  | 配置管理计划修改 | 1h | 2021-03-21 11:00 A | 2021-03-21 12:00 A | 13FS+9d | 100% |  |  |
| 34 |  | 第四次会议 | 0.4h | 2021-03-21 10:00 A | 2021-03-21 10:24 A | 28FS+2d | 100% |  |  |
| 35 |  | 项目章程修改 | 1.8h | 2021-03-23 10:00 A | 2021-03-23 11:48 A | 26FS+7d | 100% |  |  |
| 36 |  | 第五次会议 | 0.2h | 2021-03-23 10:24 A | 2021-03-23 10:36 A | 34FS+2d | 100% |  |  |
| 37 |  | 第六次会议 | 0.5h | 2021-03-25 10:00 A | 2021-03-25 10:30 A | 36FS+2d | 100% |  |  |
| 38 |  | 项目章程再次修改 | 0.5h | 2021-03-26 10:00 A | 2021-03-26 10:30 A | 35FS+2d | 100% |  |  |
| 39 |  | 甘特图更新 | 2h | 2021-03-26 10:00 A | 2021-03-26 12:00 A | 30FS+6d | 100% |  |  |
| 40 |  | 需求工程项目计划评审 | 1.5h | 2021-03-25 10:00 A | 2021-03-25 11:30 A | 33FS+1d, 35FS+1d | 100% |  |  |
| 41 | 3 | **项目实施** | 78d? | 2021-03-29 08:00 A | 2021-06-13 12:00 | 7FS+2d | 55% |  |  |
| 42 | 3.1 | **需求开发** | 62d? | 2021-03-29 08:00 A | 2021-05-29 12:00 | 7FS+2d | 68% | 0d |  |
| 43 | 3.1.1 | **需求获取** | 12d? | 2021-03-29 08:00 | 2021-04-09 12:00 | 7FS+2d | 100% |  |  |
| 44 | 3.1.1.1 | **UML工具:Rational Rose** | 9d? | 2021-03-29 08:00 | 2021-04-05 12:00 | 7FS+2d | 100% |  |  |
| 45 |  | 定义产品愿景和项目范围 | 2h | 2021-03-29 10:00 A | 2021-03-29 12:00 A | 7FS+2d | 100% |  |  |
| 46 |  | 找用户代表获取需求（yc老师） | 0.2h | 2021-03-31 10:00 A | 2021-03-31 10:12 A | 45FS+1d | 100% |  |  |
| 47 |  | 识别用户类型及其特征 | 1h | 2021-03-30 10:00 A | 2021-03-30 11:00 A | 45 | 100% |  |  |
| 48 |  | 为每类用户选出用户代表 | 0.8h | 2021-03-30 11:00 A | 2021-03-30 11:48 A | 47 | 100% |  |  |
| 49 |  | 第七次会议 | 0.2h | 2021-04-01 10:30 A | 2021-04-01 10:42 A | 37FS+7d | 100% |  |  |
| 50 |  | 甘特图更新 | 1.5h | 2021-04-01 10:00 A | 2021-04-01 11:30 A | 39FS+5d | 100% |  |  |
| 51 |  | 举办需求访谈 | 0.2h | 2021-04-02 11:48 A | 2021-04-02 12:00 A | 47FS+3d, 48FS+3d | 100% |  |  |
| 52 |  | 翻转课堂 | 0.2h | 2021-04-02 11:48 A | 2021-04-02 12:00 A | 31FS+13d | 100% |  |  |
| 53 |  | 第八次会议 | 0.5h | 2021-04-05 10:42 A | 2021-04-05 11:12 A | 49FS+4d | 100% |  |  |
| 54 |  | 甘特图更新 | 1h | 2021-04-05 08:00 A | 2021-04-05 09:00 A | 50FS+4d | 100% |  |  |
| 55 | 3.1.1.1.11 | **UML基础1** | 4d | 2021-04-06 10:00 | 2021-04-09 12:00 |  | 100% |  |  |
| 56 |  | 翻转课堂 | 1d | 2021-04-08 10:00 A | 2021-04-08 12:00 A | 52FS+5d | 100% |  |  |
| 57 |  | 第一次需求访谈 | 1h | 2021-04-09 10:00 A | 2021-04-09 11:00 A | 51FS+4d | 100% |  |  |
| 58 |  | 第九次会议 | 0.5h | 2021-04-09 11:12 A | 2021-04-09 11:42 A | 53FS+4d | 100% |  |  |
| 59 | 3.1.2 | **需求分析** | 30d | 2021-04-11 10:00 | 2021-05-10 12:00 | 43 | 100% |  |  |
| 60 | 3.1.2.1 | **UML基础2** | 13d | 2021-04-11 10:00 | 2021-04-23 12:00 A | 43 | 100% |  |  |
| 61 |  | 创建用户界面以及技术原型 | 4h | 2021-04-13 10:00 A | 2021-04-14 12:00 A | 43 | 100% |  | finish no earlier than 2021-04-14 12:00 |
| 62 |  | 第十次会议 | 0.3h | 2021-04-15 11:42 A | 2021-04-15 12:00 A | 58FS+6d | 100% |  |  |
| 63 |  | 改善界面原型 | 6h | 2021-04-16 10:00 A | 2021-04-18 12:00 A | 43 | 100% |  | finish no earlier than 2021-04-18 12:00 |
| 64 |  | 翻转课堂 | 1d | 2021-04-16 10:00 A | 2021-04-16 12:00 A | 56FS+7d | 100% |  |  |
| 65 |  | 甘特图更新 | 1d | 2021-04-19 10:00 A | 2021-04-19 12:00 A | 54FS+14d | 100% |  |  |
| 66 |  | 第十一次会议 | 0.5h | 2021-04-22 10:00 A | 2021-04-22 10:30 A | 62FS+6d | 100% |  |  |
| 67 |  | 第二次需求访谈 | 1.5h | 2021-04-21 11:00 A | 2021-04-22 10:30 A | 57FS+12d | 100% |  |  |
| 68 |  | 用例图制作 | 1d | 2021-04-23 10:00 A | 2021-04-23 12:00 A | 62FS+5d | 100% |  |  |
| 69 | 3.1.3 | **需求规格说明** | 15d? | 2021-04-26 10:00 A | 2021-05-10 12:00 | 59 | 88% |  |  |
| 70 |  | 数据字典 | 2h | 2021-04-30 10:00 A | 2021-04-30 12:00 A | 59 | 100% |  |  |

| ID | WBS | Task | Duration | Start | Finish | Predecessors | Complete | Total float |
| --- | --- | --- | --- | --- | --- | --- | --- | --- |
| 71 |  | 界面原型完善 | 2d | 2021-04-26 10:00 A | 2021-04-27 12:00 A | 63FS+7d | 100% |  |
| 72 |  | 需求优先级确认 | 2h | 2021-05-01 10:00 A | 2021-05-01 12:00 A | 70 | 100% |  |
| 73 |  | 甘特图更新 | 2h | 2021-04-27 10:00 A | 2021-04-27 12:00 A | 65FS+7d | 100% |  |
| 74 |  | 第十二次会议 | 0.75d | 2021-04-28 10:30 A | 2021-04-28 12:00 A | 66FS+6d | 100% |  |
| 75 |  | 第三次需求访谈 | 1d | 2021-04-29 10:00 A | 2021-04-29 12:00 A | 67FS+6d | 100% |  |
| 76 | 3.1.3.7 | **需求测试用例** | 2h? | 2021-05-02 10:00 A | 2021-05-02 12:00 A | 72 | 100% |  |
| 77 |  | 用户+游客需求测试用例 | 1d | 2021-05-02 10:00 A | 2021-05-02 12:00 A | 72 | 100% |  |
| 78 |  | 管理员需求测试用例 | 1d | 2021-05-02 10:00 A | 2021-05-02 12:00 A | 72 | 100% |  |
| 79 |  | 顺序图 | 1h | 2021-05-02 10:00 A | 2021-05-02 11:00 A | 72 | 100% |  |
| 80 |  | 状态机图 | 1h | 2021-05-02 10:00 A | 2021-05-02 11:00 A | 72 | 100% |  |
| 81 |  | 甘特图更新 | 1d | 2021-05-03 10:00 A | 2021-05-03 12:00 A | 73FS+5d | 100% |  |
| 82 |  | 需求跟踪矩阵 | 1d | 2021-05-06 10:00 A | 2021-05-06 12:00 A | 72FS+4d | 100% |  |
| 83 |  | 界面原型进一步迭代 | 3d | 2021-05-05 10:00 A | 2021-05-07 12:00 A | 71FS+7d | 100% |  |
| 84 |  | 第十三次会议 | 0.5h | 2021-05-08 10:00 A | 2021-05-08 10:30 A | 74FS+9d | 100% |  |
| 85 |  | SRS编写 | 2d | 2021-05-09 10:00 | 2021-05-10 12:00 | 75FS+9d |  |  |
| 86 | 3.1.4 | **需求验证** | 18d? | 2021-05-11 10:00 | 2021-05-28 12:00 | 69 |  |  |
| 87 | 3.1.4.1 | **软件需求的分析技术** | 10d? | 2021-05-11 10:00 | 2021-05-20 12:00 | 69 |  |  |
| 88 |  | 使用需求管理工具 | 1d | 2021-05-12 10:00 | 2021-05-12 12:00 | 75FS+12d |  |  |
| 89 |  | 用户手册初版 | 1d | 2021-05-11 10:00 | 2021-05-11 12:00 | 83FS+3d |  |  |
| 90 |  | 需求评审 | 2h | 2021-05-20 10:00 | 2021-05-20 12:00 | 69FS+2d |  |  |
| 91 |  | 测试需求 | 4h | 2021-05-21 10:00 | 2021-05-22 12:00 | 90FS+1d |  |  |
| 92 |  | 定义验收标准 | 4h | 2021-05-24 10:00 | 2021-05-25 12:00 | 91 |  |  |
| 93 |  | 软件需求的规范与定义 | 2d | 2021-05-25 10:00 | 2021-05-26 12:00 | 92 |  |  |
| 94 |  | 软件需求的验证与审核（SRS） | 3d | 2021-05-27 10:00 | 2021-05-29 12:00 | 93 |  |  |
| 95 | 3.2 | **需求管理** | 15d | 2021-05-30 10:00 | 2021-06-13 12:00 | 86 |  | 0d |
| 96 | 3.2.1 | **UML基础3** | 15d | 2021-05-30 10:00 | 2021-06-13 12:00 | 86 |  |  |
| 97 |  | 建立一个需求变更控制流程 | 2h | 2021-05-30 10:00 | 2021-05-30 12:00 | 86FS+1d |  |  |
| 98 |  | 对需求版本进行控制 | 2h | 2021-05-31 10:00 | 2021-05-31 12:00 | 97 |  |  |
| 99 |  | 对需求变更进行分析 | 2h | 2021-06-01 10:00 | 2021-06-01 12:00 | 98 |  |  |
| 100 |  | 维护需求变更的历史记录 | 1h | 2021-06-02 10:00 | 2021-06-02 11:00 | 99 |  |  |
| 101 |  | 跟踪每个需求的状态 | 1h | 2021-06-03 10:00 | 2021-06-03 11:00 | 100 |  |  |
| 102 |  | 使用需求管理工具 | 2h | 2021-06-04 10:00 | 2021-06-04 12:00 | 101FS+1d |  |  |
| 103 |  | UML基础4（UML基础测试） | 3d | 2021-06-04 10:00 | 2021-06-06 12:00 | 96 |  |  |
| 104 |  | 需求管理（软件需求变更文档） | 2d | 2021-06-12 10:00 | 2021-06-13 12:00 | 103 |  |  |
| 105 | 4 | **项目控制** | 7d? | 2021-06-14 08:00 | 2021-06-20 17:00 | 95 |  | 0d |
| 106 | 4.1 | **课程作业讲评（文档改进）** | 10.5d? | 2021-06-14 08:00 | 2021-06-20 17:00 | 95 |  |  |
| 107 |  | 组内进行评审 | 1h | 2021-06-14 10:00 | 2021-06-14 11:00 | 95 |  |  |
| 108 |  | 小组会议 | 0.5h | 2021-06-14 11:00 | 2021-06-14 11:30 | 107 |  |  |
| 109 |  | 客户访谈 | 2h | 2021-06-14 11:30 | 2021-06-15 11:30 | 108 |  |  |
| 110 |  | 客户评审 | 2h | 2021-06-15 11:30 | 2021-06-16 11:30 | 109 |  |  |
| 111 |  | 团队建设 | 2h | 2021-06-16 11:30 | 2021-06-17 11:30 | 110 |  |  |
| 112 | 5 | **项目收尾** | 10.5d | 2021-06-21 08:00 | 2021-06-27 17:00 | 105 |  |  |
| 113 |  | 项目总结报告 | 10h | 2021-06-21 10:00 | 2021-06-25 12:00 | 105 |  |  |
| 114 |  | 项目总评 | 2h | 2021-06-25 10:00 | 2021-06-26 12:00 | 113 |  |  |

## Version 2 (saved 2021-07-01, file PRD2021-G10-甘特图v0.2.0.mpp)

Last finish 2021-06-27 → 2021-07-02 (+5d). Complete tasks 69 → 97.

Added:

| ID | Task | Duration | Start | Finish | Predecessors | Resources |
| --- | --- | --- | --- | --- | --- | --- |
| 88 | 第十四次会议 | 1h | 2021-05-08 10:30 A | 2021-05-08 11:30 | 84 | 刘哲; 牛旷野; 童峻涛; 徐任; 朱邦杰 |
| 90 | 第十五次会议 | 0.5h | 2021-05-12 10:00 A | 2021-05-12 10:30 A | 88 | 刘哲; 牛旷野; 童峻涛; 徐任; 朱邦杰 |
| 92 | 第十六次会议纪要 | 0.5h | 2021-05-18 10:00 A | 2021-05-18 10:30 A | 90FS+7d | 刘哲; 牛旷野; 童峻涛; 徐任; 朱邦杰 |
| 94 | 召开JAD会议 | 1h | 2021-05-20 11:00 A | 2021-05-20 12:00 A | 93 | 刘哲; 牛旷野; 童峻涛; 徐任; 朱邦杰 |
| 95 | 第十七次会议纪要 | 1d | 2021-05-24 10:00 A | 2021-05-24 12:00 A | 92 | 刘哲; 牛旷野; 童峻涛; 徐任; 朱邦杰 |
| 100 | 第十八次会议 | 0.5h | 2021-05-30 10:00 A | 2021-05-30 10:30 A | 95 | 刘哲; 牛旷野; 童峻涛; 徐任; 朱邦杰 |
| 108 | 用户提出变更 | 1h | 2021-06-16 10:00 A | 2021-06-16 11:00 A | 99FS+15d | 刘哲; 牛旷野; 童峻涛; 徐任; 朱邦杰 |
| 109 | 编写CCB章程 | 1h | 2021-06-16 11:00 A | 2021-06-16 12:00 A | 108 | 刘哲; 牛旷野; 童峻涛; 徐任; 朱邦杰 |
| 110 | 组建CCB委员会 | 1h | 2021-06-17 10:00 A | 2021-06-17 11:00 A | 108 | 刘哲; 牛旷野; 童峻涛; 徐任; 朱邦杰 |
| 111 | 进行需求变更影响分析 | 1h | 2021-06-18 11:00 A | 2021-06-18 12:00 A | 108FS+2d | 刘哲; 牛旷野; 童峻涛; 徐任; 朱邦杰 |
| 112 | 召开CCB会议 | 1d | 2021-06-19 10:00 A | 2021-06-19 12:00 A | 111, 110 | 刘哲; 牛旷野; 童峻涛; 徐任; 朱邦杰 |
| 113 | **维护相关文档及需求管理工具** | 1h | 2021-06-20 10:00 A | 2021-06-20 11:00 | 112, 111 | 刘哲; 牛旷野; 童峻涛; 徐任; 朱邦杰 |
| 114 | 更改功能需求 | 0.2h | 2021-06-20 10:00 A | 2021-06-20 10:12 A | 112, 111 | 朱邦杰 |
| 115 | 更改界面原型 | 0.2h | 2021-06-20 10:00 A | 2021-06-20 10:12 A | 112, 111 | 刘哲 |
| 116 | 更改测试用例 | 0.2h | 2021-06-20 10:00 A | 2021-06-20 10:12 A | 112, 111 | 徐任 |
| 117 | 更改用户手册 | 0.2h | 2021-06-20 10:00 A | 2021-06-20 10:12 A | 111, 112 | 童峻涛 |
| 118 | 需求管理工具更新 | 0.2h | 2021-06-20 10:00 A | 2021-06-20 10:12 A | 111, 112 | 牛旷野 |
| 120 | 第十九次会议 | 0.5h | 2021-06-18 10:00 A | 2021-06-18 10:30 A | 119 | 刘哲; 牛旷野; 童峻涛; 徐任; 朱邦杰 |
| 123 | 甘特图更新 | 0.5d | 2021-06-21 10:00 A | 2021-06-21 12:00 A | 81 | 牛旷野 |
| 124 | 文档维护 | 1d | 2021-06-22 10:00 A | 2021-06-22 12:00 A | 97 | 刘哲; 牛旷野; 童峻涛; 徐任; 朱邦杰 |

Removed: 91 测试需求; 92 定义验收标准; 93 软件需求的规范与定义; 108 小组会议; 109 客户访谈; 110 客户评审; 111 团队建设

Changed:

| ID | Task | Start | Finish | Duration | Complete | Total float | Predecessors | Other |
| --- | --- | --- | --- | --- | --- | --- | --- | --- |
| 1 | **项目启动** |  | 2021-03-11 11:00 A → 2021-03-11 11:00 |  | 100% → 59% | none → 0d |  |  |
| 3 | 确定选题 |  | 2021-03-10 10:15 A → 2021-03-10 12:00 | 0.25h → 2h | 100% → 13% |  |  |  |
| 8 | 确定分工 |  |  |  |  |  | 4 → 1 |  |
| 29 | **UML概述** |  | 2021-03-26 12:00 A → 2021-03-26 12:00 |  |  |  |  |  |
| 30 | 甘特图更新 |  |  | 2h → 1h |  |  |  |  |
| 39 | 甘特图更新 |  | 2021-03-26 12:00 A → 2021-03-26 11:00 A | 2h → 1h |  |  |  |  |
| 41 | **项目实施** | 2021-03-29 08:00 A → 2021-03-29 08:00 |  |  | 55% → 97% |  |  |  |
| 42 | **需求开发** | 2021-03-29 08:00 A → 2021-03-29 08:00 |  |  | 68% → 95% |  |  |  |
| 43 | **需求获取** |  | 2021-04-09 12:00 → 2021-04-10 10:12 (+1d) | 12d? → 12.1d? | 100% → 83% | none → 0d |  |  |
| 44 | **UML工具:Rational Rose** |  |  |  | 100% → 83% |  |  |  |
| 46 | 找用户代表获取需求（yc老师） |  | 2021-03-31 10:12 A → 2021-03-31 12:00 | 0.2h → 2h | 100% → 10% |  |  |  |
| 55 | **UML基础1** |  |  |  | 100% → 88% |  | none → 52 |  |
| 58 | 第九次会议 |  | 2021-04-09 11:42 A → 2021-04-10 10:12 (+1d) | 0.5h → 1h | 100% → 50% |  |  |  |
| 62 | 第十次会议 |  | 2021-04-15 12:00 A → 2021-04-15 11:54 A | 0.3h → 0.2h |  |  |  |  |
| 65 | 甘特图更新 |  |  | 1d → 0.5d |  |  |  |  |
| 69 | **需求规格说明** |  |  |  | 88% → 98% |  |  |  |
| 73 | 甘特图更新 |  |  | 2h → 1h |  |  |  |  |
| 74 | 第十二次会议 |  |  | 0.75d → 1.5h |  |  |  |  |
| 81 | 甘特图更新 |  |  | 1d → 0.5d |  |  |  |  |
| 84 | 第十三次会议 |  | 2021-05-08 10:30 A → 2021-05-08 11:00 | 0.5h → 1h | 100% → 50% |  |  |  |
| 85 | SRS编写 | 2021-05-09 10:00 A | 2021-05-10 12:00 → 2021-05-10 11:48 A | 2d → 3.8h | 0% → 100% |  |  |  |
| 86 | **需求验证** |  |  |  | 0% → 95% |  |  |  |
| 87 | **软件需求的分析技术** |  |  |  | 0% → 92% |  |  |  |
| 89 | 使用需求管理工具 | 2021-05-12 10:00 A | 2021-05-12 12:00 A |  | 0% → 100% |  |  |  |
| 91 | 用户手册初版 | 2021-05-11 10:00 A | 2021-05-11 12:00 → 2021-05-11 11:30 A | 1d → 1.5h | 0% → 100% |  |  |  |
| 93 | 需求评审 | 2021-05-20 10:00 A | 2021-05-20 12:00 → 2021-05-20 11:00 A | 2h → 1h | 0% → 100% |  |  |  |
| 96 | 软件需求的验证与审核（SRS） | 2021-05-27 10:00 A | 2021-05-29 12:00 A |  | 0% → 100% |  | 软件需求的规范与定义 → 87 | resources none → 刘哲; 牛旷野; 童峻涛; 徐任; 朱邦杰 |
| 97 | **需求管理** | 2021-05-30 10:00 A | 2021-06-13 12:00 → 2021-06-20 12:00 (+7d) | 15d → 22d? | 0% → 99% |  |  |  |
| 98 | **UML基础3** | 2021-05-30 10:00 A |  | 15d → 15d? | 0% → 100% |  |  |  |
| 99 | 建立一个需求变更控制流程 | 2021-05-30 10:00 A | 2021-05-30 12:00 → 2021-05-30 11:30 A | 2h → 1.5h | 0% → 100% |  |  |  |
| 101 | 对需求版本进行控制 | 2021-05-31 10:00 A | 2021-05-31 12:00 A |  | 0% → 100% |  |  |  |
| 102 | 对需求变更进行分析 | 2021-06-01 10:00 A | 2021-06-01 12:00 A |  | 0% → 100% |  |  |  |
| 103 | 维护需求变更的历史记录 | 2021-06-02 10:00 A | 2021-06-02 11:00 A |  | 0% → 100% |  |  |  |
| 104 | 跟踪每个需求的状态 | 2021-06-03 10:00 A | 2021-06-03 11:00 A |  | 0% → 100% |  |  |  |
| 105 | 使用需求管理工具 | 2021-06-04 10:00 A | 2021-06-04 12:00 A |  | 0% → 100% |  |  |  |
| 106 | UML基础4（UML基础测试） | 2021-06-04 10:00 A | 2021-06-06 12:00 A |  | 0% → 100% |  |  |  |
| 107 | **需求管理（软件需求变更文档）** | 2021-06-12 10:00 → 2021-06-15 10:00 (+3d) | 2021-06-13 12:00 → 2021-06-20 12:00 (+7d) | 2d → 6d? | 0% → 99% |  |  |  |
| 119 | 组内进行评审 | 2021-06-14 10:00 → 2021-06-17 10:00 A (+3d) | 2021-06-14 11:00 → 2021-06-17 11:00 A (+3d) |  | 0% → 100% |  | 97 → none |  |
| 121 | **项目控制** | 2021-06-14 08:00 → 2021-06-21 10:00 A (+7d) | 2021-06-20 17:00 → 2021-07-01 11:00 (+11d) | 7d? → 10.5d? | 0% → 100% | 0d → none |  |  |
| 122 | **课程作业讲评（文档改进）** | 2021-06-14 08:00 → 2021-06-21 10:00 A (+7d) | 2021-06-20 17:00 → 2021-07-01 11:00 (+11d) |  | 0% → 100% |  |  |  |
| 125 | **项目收尾** |  | 2021-06-27 17:00 → 2021-07-01 12:00 (+4d) | 10.5d → 12d | 0% → 75% |  |  |  |
| 126 | 项目总结报告 | 2021-06-21 10:00 → 2021-06-23 10:00 A (+2d) | 2021-06-25 12:00 A | 10h → 6h | 0% → 100% |  |  |  |
| 127 | 项目总评 | 2021-06-25 10:00 → 2021-07-01 10:00 (+6d) | 2021-06-26 12:00 → 2021-07-02 12:00 (+6d) |  |  |  |  |  |
